# Plan UPEDU

How a schedule from MS Project changed from version to version. A marks actual dates.

## Version 1 (saved 2008-11-18)

Note of the change: Subida la segunda versión del Project, agregagado las subetapas a cada etapa y añadida alguna tarea que he visto necesaria.

| ID | WBS | Task | Duration | Start | Finish | Predecessors | Total float | Constraint |
| --- | --- | --- | --- | --- | --- | --- | --- | --- |
| 1 | 1 | **Inicio** | 20d | 2008-11-03 | 2008-11-25 |  | 0d |  |
| 2 |  | Análisis inicial de requisitos | 2d | 2008-11-03 | 2008-11-04 |  | 0d |  |
| 3 | 1.2 | **General** | 10d | 2008-11-05 | 2008-11-15 |  | 6d |  |
| 4 |  | Escribir/actualizar SRS | 5d | 2008-11-05 | 2008-11-10 | 2 | 2d |  |
| 5 |  | Escribir/actualizar CU | 5d | 2008-11-11 | 2008-11-15 | 4 | 2d |  |
| 6 | 1.3 | **Gestión** | 16d | 2008-11-05 | 2008-11-22 |  | 0d |  |
| 7 |  | Visión Inicial | 5d | 2008-11-05 | 2008-11-10 | 2 | 0d |  |
| 8 |  | Plan de iteración | 5d | 2008-11-11 | 2008-11-15 | 7 | 0d |  |
| 9 |  | Gestión de Riesgos | 2d | 2008-11-11 | 2008-11-12 | 7 | 3d |  |
| 10 |  | Plan de Configuraciones | 2d | 2008-11-11 | 2008-11-12 | 7 | 3d |  |
| 11 |  | Plan de calidad | 2d | 2008-11-11 | 2008-11-12 | 7 | 3d |  |
| 12 |  | Plan de desarrollo (SDP) | 6d | 2008-11-17 | 2008-11-22 | 11, 7, 8, 9, 10 | 0d |  |
| 13 | 1.4 | **Revisión** | 2d | 2008-11-24 | 2008-11-25 |  | 0d |  |
| 14 |  | Revisión artefactos | 2d | 2008-11-24 | 2008-11-25 | 12, 5 | 0d |  |
| 15 |  | Entrega Plan Proyecto | 0d | 2008-11-25 | 2008-11-25 | 14 | 0d | finish no later than 2008-12-09 |
| 16 | 3 | **Elaboración** | 17d | 2008-11-26 | 2008-12-16 |  | 0d |  |
| 17 | 3.1 | **General** | 15d | 2008-11-26 | 2008-12-13 |  | 0d |  |
| 18 |  | Completar Casos de Uso | 2d | 2008-11-26 | 2008-11-27 | 15 | 0d |  |
| 19 |  | Detallar CU | 5d | 2008-11-28 | 2008-12-03 | 18 | 0d |  |
| 20 |  | Modelo estático análisis | 2d | 2008-12-04 | 2008-12-05 | 19 | 0d |  |
| 21 |  | Modelo dinámico análisis | 5d | 2008-12-06 | 2008-12-12 | 20 | 0d |  |
| 22 |  | Análisis de la arquitectura | 2d | 2008-12-06 | 2008-12-09 | 20 | 3d |  |
| 23 |  | Especificaciones suplementarias | 1d | 2008-12-13 | 2008-12-13 | 22, 21 | 0d |  |
| 24 | 3.2 | **Gestión** | 1d | 2008-11-26 | 2008-11-26 |  | 14d |  |
| 25 |  | Actualizar plan de iteración | 1d | 2008-11-26 | 2008-11-26 | 15 | 14d |  |
| 26 | 3.3 | **Revisión** | 2d | 2008-12-15 | 2008-12-16 |  | 0d |  |
| 27 |  | Revision semanal | 2d | 2008-12-15 | 2008-12-16 | 25, 23 | 32d |  |
| 28 |  | Revisión Lista de Riesgos | 1d | 2008-12-15 | 2008-12-15 | 25, 23 | 0d |  |
| 29 |  | Especificación de Arquitectura | 0d | 2008-12-15 | 2008-12-15 | 28 | 0d |  |
| 30 | 5 | **Construcción** | 25d | 2008-12-16 | 2009-01-19 |  | 0d |  |
| 31 | 5.1 | **Construcción1** | 12d | 2008-12-16 | 2009-01-02 |  | 0d |  |
| 32 | 5.1.1 | **General** | 7d | 2008-12-16 | 2008-12-23 |  | 0d |  |
| 33 |  | Actualizar especificación | 1d | 2008-12-16 | 2008-12-16 | 29 | 0d |  |
| 34 |  | Actualizar y completar análisis | 1d | 2008-12-17 | 2008-12-17 | 33 | 0d |  |
| 35 |  | Diseño arquitectónico | 3d | 2008-12-18 | 2008-12-20 | 34 | 2d |  |
| 36 |  | Diseño detallado | 5d | 2008-12-18 | 2008-12-23 | 34 | 0d |  |
| 37 |  | Diseño base de datos | 5d | 2008-12-18 | 2008-12-23 | 34 | 0d |  |
| 38 |  | Escribir Plan de pruebas | 3d | 2008-12-18 | 2008-12-20 | 34 | 29d |  |
| 39 | 5.1.2 | **Implementación** | 11d | 2008-12-17 | 2009-01-02 |  | 6d |  |
| 40 |  | Desarrollo de funcionalidad principal | 5d | 2008-12-26 | 2009-01-02 | 36, 35, 37, 34 | 0d |  |
| 41 |  | Desarrollo GUI | 1d | 2008-12-17 | 2008-12-17 | 33 | 32d |  |
| 42 |  | Desarrollo base de datos | 3d | 2008-12-26 | 2008-12-29 | 37 | 24d |  |
| 43 |  | Pruebas de código iniciales | 1d | 2008-12-30 | 2008-12-30 | 40FS-4% | 23d |  |
| 44 | 5.1.3 | **Gestión** | 1d | 2008-12-17 | 2008-12-17 |  | 32d |  |
| 45 |  | Actualizar plan de iteracion | 1d | 2008-12-17 | 2008-12-17 | 33 | 32d |  |
| 46 | 5.1.4 | **Revisión** | 5d | 2008-12-26 | 2009-01-02 |  | 0d |  |
| 47 |  | Revisión semanal | 1d | 2008-12-26 | 2008-12-26 | 36, 35, 37, 34 | 4d |  |
| 48 |  | Revisión de código | 2d | 2008-12-30 | 2009-01-02 | 40FS-4% | 0d |  |
| 49 |  | Versión ALFA | 0d | 2009-01-02 | 2009-01-02 | 48, 47 | 0d |  |
| 50 | 5.3 | **Construcción2** | 13d | 2009-01-03 | 2009-01-19 |  | 0d |  |
| 51 | 5.3.1 | **General** | 4d | 2009-01-03 | 2009-01-08 |  | 0d |  |
| 52 |  | Diseño arquitectónico | 1d | 2009-01-03 | 2009-01-03 | 49 | 3d |  |
| 53 |  | Diseño detallado | 4d | 2009-01-03 | 2009-01-08 | 49 | 0d |  |
| 54 |  | Actualizar plan de pruebas | 1d | 2009-01-03 | 2009-01-03 | 49 | 11d |  |
| 55 |  | Escribir resultados de pruebas | 1d | 2009-01-03 | 2009-01-03 | 49 | 11d |  |
| 56 |  | Manual de usuario | 3d | 2009-01-03 | 2009-01-07 | 49 | 10d |  |
| 57 | 5.3.2 | **Implementación** | 7.5d | 2009-01-09 | 2009-01-17 |  | 0d |  |
| 58 |  | Desarrollo de componentes | 5d | 2009-01-09 | 2009-01-14 | 53, 52 | 0d |  |
| 59 |  | Pruebas de la versión alfa | 2d | 2009-01-13 | 2009-01-15 | 58FS-3% | 10.5d |  |
| 60 |  | Pruebas de integración | 2d | 2009-01-15 | 2009-01-17 | 59 | 10.5d |  |
| 61 | 5.3.3 | **Gestión** | 1d | 2009-01-03 | 2009-01-03 |  | 21d |  |
| 62 |  | Actualizar plan de iteración | 1d | 2009-01-03 | 2009-01-03 | 49 | 21d |  |
| 63 | 5.3.4 | **Revisión** | 9d | 2009-01-09 | 2009-01-19 |  | 0d |  |
| 64 |  | Revisión semanal | 1d | 2009-01-09 | 2009-01-09 | 52, 53, 54, 55 | 8d |  |
| 65 |  | Revisión de código | 4d | 2009-01-15 | 2009-01-19 | 58 | 0d |  |
| 66 |  | Versión BETA | 0d | 2009-01-19 | 2009-01-19 | 65, 58, 56, 64 | 0d |  |
| 67 |  | SEPROSO 1.0 | 0d | 2009-01-19 | 2009-01-19 | 66 | 4d |  |
| 68 | 7 | **Transición** | 9d | 2009-01-20 | 2009-01-29 |  | 0d |  |
| 69 | 7.1 | **General** | 5d | 2009-01-20 | 2009-01-24 |  | 1d |  |
| 70 |  | Manual de Administrador | 2d | 2009-01-20 | 2009-01-21 | 67 | 4d |  |

| ID | WBS | Task | Duration | Start | Finish | Predecessors | Total float | Constraint |
| --- | --- | --- | --- | --- | --- | --- | --- | --- |
| 71 |  | Manual de Instalación | 2d | 2009-01-20 | 2009-01-21 | 67 | 4d |  |
| 72 |  | Escribir resultados de pruebas | 1d | 2009-01-21 | 2009-01-21 | 75 | 0d |  |
| 73 |  | Completar documentación | 3d | 2009-01-22 | 2009-01-24 | 72 | 0d |  |
| 74 | 7.2 | **Implementación** | 1d | 2009-01-20 | 2009-01-20 |  | 0d |  |
| 75 |  | Pruebas versión beta | 1d | 2009-01-20 | 2009-01-20 | 66 | 0d |  |
| 76 | 7.3 | **Gestión** | 1d | 2009-01-26 | 2009-01-26 | 73 | 0d |  |
| 77 |  | Actalizar plan de iteración | 1d | 2009-01-26 | 2009-01-26 | 67 | 0d |  |
| 78 | 7.4 | **Revisión** | 3d | 2009-01-27 | 2009-01-29 | 77 | 0d |  |
| 79 |  | Revisión semanal | 3d | 2009-01-27 | 2009-01-29 | 71, 70, 73 | 0d |  |
| 80 |  | Documentación completa | 0d | 2009-01-29 | 2009-01-29 | 79 | 0d |  |
| 81 |  | Entrega Práctica | 0d | 2009-01-29 | 2009-01-29 | 79 | 10d | finish no later than 2009-02-10 |

## Version 2 (saved 2008-12-09)

Note of the change: Subido el .RAR de la entrega del Plan de proyecto. Además se han revisado todos los documentos anexos de nuevo, corrigiendo algun fallo y algun tecnicismo. Se eliminan paginas de relleno en algun documento.

Last finish stays 2009-01-29.

Changed:

| ID | Task | Start | Finish | Duration | Total float | Predecessors | Other |
| --- | --- | --- | --- | --- | --- | --- | --- |
| 2 | Análisis inicial de requisitos |  |  |  |  |  | resources Analista → Analista [400%] |
| 4 | Escribir/actualizar SRS |  |  |  | 2d → 6d |  | resources Analista → Analista [300%] |
| 5 | Escribir/actualizar CU |  |  |  | 2d → 6d |  | resources Analista → Analista [300%] |
| 11 | Plan de mediciones |  |  |  |  |  | was named Plan de calidad |
| 12 | Plan de desarrollo (SPMP) |  |  |  |  |  | was named Plan de desarrollo (SDP) |
| 18 | Completar Casos de Uso |  |  |  |  |  | resources Analista → Analista [400%] |
| 19 | Detallar CU |  |  |  |  |  | resources Analista → Analista [400%] |
| 20 | Modelo estático análisis |  |  |  |  |  | resources Analista → Analista [400%] |
| 21 | Modelo dinámico análisis |  |  |  |  |  | resources Analista → Analista [300%] |
| 24 | **Gestión** | 2008-11-26 → 2008-12-13 (+17d) | 2008-11-26 → 2008-12-13 (+17d) |  | 14d → 0d |  |  |
| 25 | Actualizar plan de iteración | 2008-11-26 → 2008-12-13 (+17d) | 2008-11-26 → 2008-12-13 (+17d) |  | 14d → 0d | 15 → 22, 21 |  |
| 33 | Actualizar especificación |  |  |  |  |  | resources Analista → Analista [300%] |
| 34 | Actualizar y completar análisis |  |  |  |  |  | resources Analista → Analista [300%] |
| 40 | Desarrollo de funcionalidad principal |  |  |  |  |  | resources Programador → Programador [200%] |
| 42 | Desarrollo base de datos |  |  |  | 24d → 23d |  | resources Programador → Programador [200%] |
| 53 | Diseño detallado |  |  |  |  |  | resources Diseñador software → Diseñador software [200%] |
| 54 | Actualizar plan de pruebas |  | 2009-01-03 → 2009-01-05 (+2d) | 1d → 2d | 11d → 10d |  | resources Ingeniero de pruebas → Ingeniero de pruebas [50%] |
| 55 | Escribir resultados de pruebas |  | 2009-01-03 → 2009-01-05 (+2d) | 1d → 2d | 11d → 10d |  | resources Ingeniero de pruebas → Ingeniero de pruebas [50%] |
| 58 | Desarrollo de componentes |  |  |  |  |  | resources Programador → Programador [300%] |
| 70 | Manual de Administrador |  |  |  |  |  | resources Gestor proyecto → Gestor proyecto [200%] |
| 71 | Manual de Instalación |  |  |  |  |  | resources Gestor proyecto → Gestor proyecto [200%] |
| 73 | Completar documentación |  |  |  |  |  | resources Gestor proyecto → Gestor proyecto [200%] |
